# Жилой дом

Schedule from MS Project, 2020-01-01 to 2020-04-30.

## Calendars

- Стандартный: Mon-Fri 09:00-13:00, 14:00-18:00; Sat-Sun off.
- Календарь рабочих: Mon-Sat 07:00-11:00, 11:30-18:30, 19:00-22:00; Sun off. Exceptions (off unless hours are given): 2020-03-08 (8 марта).
- Календарь ИТР: Mon-Fri 09:00-13:00, 14:00-18:00; Sat-Sun off. Exceptions (off unless hours are given): 2020-03-08 (8 марта).

## Schedule

| ID | WBS | Task | Type | Duration | Start | Finish | Predecessors | Total slack | Free slack | Constraint | Deadline | Calendar | Work | Text2 |
| --- | --- | --- | --- | --- | --- | --- | --- | --- | --- | --- | --- | --- | --- | --- |
| 1 | 1 | **Инициация проекта** |  | 15d | 2020-01-01 | 2020-01-22 |  | 0d |  |  | 2020-01-22 | Календарь ИТР | 70h |  |
| 2 | 1.1 | Принято решение о начале проекта | milestone | 0d | 2020-01-01 | 2020-01-01 |  | 0d |  |  | 2020-01-09 | Календарь ИТР |  | 100 |
| 3 | 1.2 | Юридический анализ зем. Участка |  | 4d | 2020-01-01 | 2020-01-06 | 2 | 0d |  |  | 2020-01-06 | Календарь ИТР | 30h | 100 |
| 4 | 1.3 | Маркетинговый анализ ЗУ |  | 5d | 2020-01-01 | 2020-01-07 | 3SS | 0d |  |  | 2020-01-07 | Календарь ИТР | 20h | 100 |
| 5 | 1.4 | Составление БП |  | 4d | 2020-01-08 | 2020-01-13 | 4, 3 | 5d | 0d |  | 2020-01-28 | Календарь ИТР | 16h | 100 |
| 6 | 1.5 | Принятие решения по проекту |  | 2d | 2020-01-14 | 2020-01-15 | 5 | 5d | 4d |  | 2020-01-30 | Календарь ИТР | 4h | 100 |
| 7 | 1.6 | Решение о начале проекта | milestone | 0d | 2020-01-22 | 2020-01-22 | 6 | 1d |  | start no earlier than 2020-01-22 | 2020-01-30 | Календарь ИТР |  | 100 |
| 8 | 2 | **Землеотвод** |  | 30d | 2020-01-22 | 2020-03-03 | 1 | 1d | 0d |  | 2020-03-05 | Календарь ИТР | 86h |  |
| 9 | 2.1 | Разработка документации |  | 15d | 2020-01-22 | 2020-02-11 |  | 1d | 0d |  | 2020-02-12 | Календарь ИТР | 30h | 100 |
| 10 | 2.2 | Согласование проекта |  | 10d | 2020-02-12 | 2020-02-25 | 9 | 1d | 0d |  | 2020-02-26 | Календарь ИТР | 24h | 100 |
| 11 | 2.3 | Заключение договора аренды |  | 5d | 2020-02-26 | 2020-03-03 | 10 | 1d | 0d |  | 2020-03-04 | Календарь ИТР | 32h | 100 |
| 12 | 2.4 | Окончание этапа | milestone | 0d | 2020-03-03 | 2020-03-03 | 11 | 2d |  |  | 2020-03-05 | Календарь ИТР |  | 100 |
| 13 | 3 | **Проектирование** |  | 23d | 2020-03-04 | 2020-04-03 | 8 | 0d |  |  | 2020-04-03 | Календарь ИТР | 416h |  |
| 14 | 3.1 | **Эскизный проект** |  | 5d | 2020-03-04 | 2020-03-10 |  | 2d |  |  | 2020-03-12 | Календарь ИТР | 40h |  |
| 15 | 3.1.1 | Разработка эскизного проекта |  | 5d | 2020-03-04 | 2020-03-10 |  | 2d |  |  | 2020-03-12 | Календарь ИТР | 40h | 100 |
| 16 | 3.2 | **Проект стадии П** |  | 5d | 2020-03-13 | 2020-03-19 |  |  |  |  | 2020-03-19 | Календарь ИТР | 200h |  |
| 17 | 3.2.1 | Разработка проекта стадии П |  | 5d | 2020-03-13 | 2020-03-19 | 15 | 0d |  | start no earlier than 2020-03-13 | 2020-03-19 | Календарь ИТР | 200h | 100 |
| 18 | 3.3 | **Рабочая документация** |  | 11d | 2020-03-20 | 2020-04-03 |  |  |  |  | 2020-04-03 | Календарь ИТР | 176h |  |
| 19 | 3.3.1 | Проработка рабочих чертежей |  | 6d | 2020-03-20 | 2020-03-27 | 17 | 0d |  |  | 2020-03-27 | Календарь ИТР | 160h | 70 |
| 20 | 3.3.2 | Передача рабочих чертежей генподрядчику | manual | 4d | 2020-03-30 | 2020-04-02 | 19 |  |  |  | 2020-04-02 | Календарь ИТР | 16h |  |
| 21 | 3.3.3 | Крайний срок выдачи рабочей документации | milestone, manual | 0d | 2020-04-03 | 2020-04-03 | 20 |  |  |  | 2020-04-03 | Календарь ИТР |  | 100 |
| 22 | 4 | **Строительство** |  | 17d | 2020-03-26 | 2020-04-18 | 13SS+6% | 0d |  |  | 2020-04-18 |  | 368h |  |
| 23 | 4.1 | **Надземные работы** |  | 25.56d | 2020-03-26 | 2020-04-11 |  |  |  |  | 2020-04-11 | Календарь рабочих |  |  |
| 24 | 4.1.1 | Кирпичная кладка наружных стен | manual | 7d | 2020-03-26 | 2020-03-31 |  |  |  |  | 2020-03-31 | Календарь рабочих |  | 150 |
| 25 | 4.1.2 | Кирпичная кладка внутренних стен | manual | 5d | 2020-03-31 | 2020-04-02 | 24 |  |  |  | 2020-04-03 | Календарь рабочих |  | 100 |
| 26 | 4.1.3 | Устройство кровли | manual | 6d | 2020-04-06 | 2020-04-10 | 25SS+10d |  |  |  | 2020-04-11 | Календарь рабочих |  | 300 |

| ID | WBS | Task | Type | Duration | Start | Finish | Predecessors | Total slack | Free slack | Constraint | Deadline | Calendar | Work | Text2 |
| --- | --- | --- | --- | --- | --- | --- | --- | --- | --- | --- | --- | --- | --- | --- |
| 27 | 4.2 | **Отделочные работы** |  | 13.31d | 2020-04-10 | 2020-04-18 |  |  |  |  | 2020-04-18 | Календарь рабочих | 368h |  |
| 28 | 4.2.1 | Монтаж окон |  | 3d | 2020-04-10 | 2020-04-11 |  | -3.25d | 0d |  | 2020-04-12 | Календарь рабочих | 64h | 70 |
| 29 | 4.2.2 | Монтаж дверей |  | 3d | 2020-04-11 | 2020-04-14 | 28 | -3.25d | 0d |  | 2020-04-14 | Календарь рабочих | 64h |  |
| 30 | 4.2.3 | Штукатурные работы |  | 6d | 2020-04-14 | 2020-04-17 | 29 | -3.25d | 0d |  | 2020-04-18 | Календарь рабочих | 240h | 800 |
| 31 | 4.2.4 | Крайний срок окончания строительства | milestone | 0d | 2020-04-17 | 2020-04-17 | 30 | 1.31d |  | start no earlier than 2020-04-15 | 2020-04-18 | Календарь рабочих |  | 100 |
| 32 | 5 | **Реализация дома** |  | 10d | 2020-04-16 | 2020-04-30 | 22 | 0d |  |  | 2020-05-01 | Календарь ИТР | 28h |  |
| 33 | 5.1 | Согласование договора с клиентом | manual | 5d | 2020-04-16 | 2020-04-22 |  |  |  |  | 2020-04-23 | Календарь ИТР | 16h | 100 |
| 34 | 5.2 | Подписание договора с клиентом | manual | 3d | 2020-04-23 | 2020-04-27 | 33 |  |  |  | 2020-04-28 | Календарь ИТР | 8h | 100 |
| 35 | 5.3 | Оплата по договору | manual | 2d | 2020-04-28 | 2020-04-29 | 34 |  |  |  | 2020-04-30 | Календарь ИТР | 4h | 100 |
| 36 | 5.4 | Крайний срок окончания реализации | milestone, manual | 0d | 2020-04-30 | 2020-04-30 | 35 |  |  |  | 2020-05-01 | Календарь ИТР |  | 100 |
